# 施工进度

Schedule from a web Gantt chart, 2025-07-23 to 2025-09-15.
Saturdays and Sundays are off

## Schedule

| ID | WBS | Task | Duration | Start | Finish |
| --- | --- | --- | --- | --- | --- |
| 2 | 1 | 现场准备、深化设计、交底、临时设施、防水 | 39d | 2025-07-23 | 2025-09-15 |
